# CSMneedtocheckin

Schedule from MS Project, 2005-08-01 to 2006-03-20, A marks actual dates.
NCI

## Calendars

- Standard: Mon-Fri 08:00-12:00, 13:00-17:00; Sat-Sun off. Exceptions (off unless hours are given): 2005-11-11, 2005-11-24 to 2005-11-25, 2005-12-26, 2006-01-02.

## Resources

| Resource |
| --- |
| Vinay |
| Kunal |
| Charles |
| Eric |
| Avinash |
| 100 |
| SAIC |
| Art |
| Team |
| Resource 3 |
| Brian |
| QA |

## Schedule

| ID | WBS | Task | Type | Duration | Start | Finish | Predecessors | Complete | Remaining | Total slack | Constraint | Resources | Work | Actual work |
| --- | --- | --- | --- | --- | --- | --- | --- | --- | --- | --- | --- | --- | --- | --- |
| 1 | 1 | **CSM Post Release** |  | 35.25d | 2005-08-01 A | 2005-09-19 |  | 96% | 1.35d | 124.75d |  |  | 803.16h | 785.16h |
| 2 | 1.1 | **Production Support** |  | 22d | 2005-08-01 A | 2005-08-30 A |  | 100% |  |  |  |  | 132h | 132h |
| 3 | 1.1.1 | Support Activities |  | 22d | 2005-08-01 A | 2005-08-30 A |  | 100% |  |  |  | Vinay [25%]; Kunal [25%]; Eric [25%] | 132h | 132h |
| 4 | 1.2 | **Meetings** |  | 3.2d | 2005-08-01 A | 2005-08-04 A |  | 100% |  |  |  |  | 12.8h | 12.8h |
| 5 | 1.2.1 | Status Meeting |  | 0.1d | 2005-08-01 A | 2005-08-01 A |  | 100% |  |  |  | Vinay; Kunal; Charles; Eric | 3.2h | 3.2h |
| 6 | 1.2.2 | IBM |  | 0.2d | 2005-08-01 A | 2005-08-01 A |  | 100% |  |  |  | Vinay; Kunal; Charles | 4.8h | 4.8h |
| 7 | 1.2.3 | IBM |  | 0.2d | 2005-08-04 A | 2005-08-04 A |  | 100% |  |  | start no earlier than 2005-08-04 | Vinay; Kunal; Charles | 4.8h | 4.8h |
| 8 | 1.3 | Post Release Analysis |  | 1d | 2005-08-11 A | 2005-08-11 A |  | 100% |  |  | start no earlier than 2005-08-11 | Kunal [25%]; Vinay [75%]; Eric [75%] | 14h | 14h |
| 9 | 1.4 | **Presentations/Conferences** |  | 15d | 2005-08-01 A | 2005-08-19 A |  | 100% |  |  |  |  | 184.4h | 184.4h |
| 10 | 1.4.1 | **Preparation** |  | 10d | 2005-08-01 A | 2005-08-12 A |  | 100% |  |  |  |  | 82.4h | 82.4h |
| 11 | 1.4.1.1 | Developer's Boot Camp Presentation |  | 3d | 2005-08-01 A | 2005-08-03 A |  | 100% |  |  |  | Kunal [25%]; Vinay [75%]; Eric [75%] | 22h | 22h |
| 12 | 1.4.1.2 | caCore Architecture Meeting |  | 2d | 2005-08-04 A | 2005-08-05 A | 11 | 100% |  |  |  | Kunal [25%]; Vinay [75%]; Eric [75%] | 28h | 28h |
| 13 | 1.4.1.3 | Review |  | 0.3d | 2005-08-09 A | 2005-08-09 A |  | 100% |  |  | start no earlier than 2005-08-09 | Kunal [75%]; Vinay [75%]; Eric [75%] | 5.4h | 5.4h |
| 14 | 1.4.1.4 | Update |  | 2.5d | 2005-08-09 A | 2005-08-11 A | 13 | 100% |  |  |  | Eric [75%] | 15h | 15h |
| 15 | 1.4.1.5 | Installation Test |  | 1d | 2005-08-12 A | 2005-08-12 A |  | 100% |  |  | start no earlier than 2005-08-12 | Vinay [75%]; Kunal [75%] | 12h | 12h |
| 16 | 1.4.2 | Developer Boot Camp Presentation (NCICB) |  | 1d | 2005-08-15 A | 2005-08-15 A | 10 | 100% |  |  |  | Vinay [75%]; Kunal [75%] | 12h | 12h |
| 17 | 1.4.3 | caBig Architecture F2F |  | 3d | 2005-08-16 A | 2005-08-18 A | 16 | 100% |  |  |  | Vinay [75%]; Kunal [75%]; Eric [75%] | 54h | 54h |
| 18 | 1.4.4 | Developer Boot Camp |  | 2d | 2005-08-18 A | 2005-08-19 A |  | 100% |  |  | start no earlier than 2005-08-18 | Vinay [75%]; Kunal [75%]; Eric [75%] | 36h | 36h |
| 19 | 1.5 | **Best Practices** |  | 3d | 2005-08-08 A | 2005-08-11 A |  | 100% |  |  |  |  | 18h | 18h |
| 20 | 1.5.1 | Create SOP Documents |  | 3d | 2005-08-08 A | 2005-08-11 A | 13FS-1d | 100% |  |  |  | Vinay [75%] | 18h | 18h |
| 21 | 1.6 | SDK Defect Fix/Documentation Update |  | 3d | 2005-08-03 A | 2005-08-05 A |  | 100% |  |  | finish no earlier than 2005-08-08 | Kunal | 18h | 18h |
| 22 | 1.7 | SdK Testing/Documentation Update |  | 5d | 2005-08-08 A | 2005-08-12 A | 21 | 100% |  |  |  | Kunal [50%]; Eric [50%] | 21.33h | 21.33h |
| 23 | 1.8 | Production | milestone | 0d | 2005-08-25 A | 2005-08-25 A |  | 100% |  |  | start no earlier than 2005-08-25 | Kunal |  |  |
| 24 | 1.9 | **Open Source Initiative** |  | 4d | 2005-08-22 A | 2005-08-25 |  | 25% | 3d | 141d |  |  | 24h | 6h |
| 25 | 1.9.1 | Define Approach |  | 1d | 2005-08-22 A | 2005-08-22 A | 18 | 100% |  |  |  | Kunal [75%] | 6h | 6h |
| 26 | 1.9.2 | List OS Items for Development |  | 3d | 2005-08-23 | 2005-08-25 | 25 |  |  | 134.58d |  | Kunal [75%] | 18h |  |

| ID | WBS | Task | Type | Duration | Start | Finish | Predecessors | Complete | Remaining | Total slack | Constraint | Resources | Work | Actual work |
| --- | --- | --- | --- | --- | --- | --- | --- | --- | --- | --- | --- | --- | --- | --- |
| 27 | 1.10 | **Reference Implementation** |  | 1d | 2005-08-02 A | 2005-08-02 A |  | 100% |  |  |  |  | 6h | 6h |
| 28 | 1.10.1 | WrapUp Work |  | 1d | 2005-08-02 A | 2005-08-02 A |  | 100% |  |  | start no earlier than 2005-08-02 | Kunal [75%] | 6h | 6h |
| 29 | 1.11 | **Requirement Gathering/Scope** |  | 18.25d | 2005-08-22 A | 2005-09-15 A | 9 | 100% |  |  |  |  | 308.5h | 308.5h |
| 30 | 1.11.1 | Gather/Writeup Requirements |  | 7d | 2005-08-22 A | 2005-08-30 A |  | 100% |  |  |  | Vinay [75%]; Kunal [75%]; Eric [75%] | 126h | 126h |
| 31 | 1.11.2 | Internal Review/Updates |  | 2d | 2005-08-31 A | 2005-09-01 A | 30 | 100% |  |  |  | Vinay [75%]; Kunal [75%]; Eric [75%] | 36h | 36h |
| 32 | 1.11.3 | Estimation |  | 5d | 2005-09-02 A | 2005-09-08 A | 31 | 100% |  |  |  | Vinay [75%]; Kunal [75%]; Eric [75%] | 90h | 90h |
| 33 | 1.11.4 | Requirements Prioritization |  | 0.25d | 2005-09-09 A | 2005-09-09 A | 32 | 100% |  |  |  | Avinash; Vinay [75%]; Kunal [75%]; Charles; Eric [75%] | 8.5h | 8.5h |
| 34 | 1.11.5 | Scope Document Development |  | 4d | 2005-09-09 A | 2005-09-15 A | 33 | 100% |  |  |  | Vinay [50%]; Kunal [50%]; Eric [50%] | 48h | 48h |
| 35 | 1.11.6 | Scope Document SignOff | milestone | 0d | 2005-09-15 A | 2005-09-15 A | 34 | 100% |  |  |  | Avinash; Charles; Vinay |  |  |
| 36 | 1.12 | **Planning** |  | 6d | 2005-09-09 A | 2005-09-19 A |  | 100% |  |  |  |  | 64.13h | 64.13h |
| 37 | 1.12.1 | Task Plan |  | 5d | 2005-09-09 A | 2005-09-16 A | 33 | 100% |  |  |  | Charles [10%]; Vinay [25%]; Kunal [25%]; Eric [25%] | 30.13h | 30.13h |
| 38 | 1.12.2 | Task Plan Review |  | 1d | 2005-09-16 A | 2005-09-19 A | 37 | 100% |  |  |  | Avinash; Vinay [75%]; Kunal [75%]; Charles; Eric [75%] | 34h | 34h |
| 39 | 1.12.3 | Task Plan SignOff | milestone | 0d | 2005-09-19 A | 2005-09-19 A | 38 | 100% |  |  |  | Avinash; Charles |  |  |
| 40 | 2 | **CSM 3.1** |  | 126.75d | 2005-09-15 A | 2006-03-20 | 35 | 24% | 96.33d | 0d |  |  | 3167.67h | 1040.49h |
| 41 | 2.1 | Production Support |  | 97d | 2005-09-15 | 2006-02-06 |  |  |  | 23.33d |  | Kunal [25%] | 194h |  |
| 42 | 2.2 | Gforge Support |  | 104d | 2005-09-15 | 2006-02-15 |  |  |  | 16.33d |  | Team [5%] | 41.6h |  |
| 43 | 2.3 | Best Practices/SOPs |  | 104d | 2005-09-15 | 2006-02-15 |  |  |  | 16.33d |  | Vinay [50%] | 416h |  |
| 44 | 2.4 | **Elaboration Phase** |  | 74.62d | 2005-09-15 A | 2006-01-04 | 35 | 91% | 6.83d | 52.13d |  |  | 512.64h | 447.84h |
| 45 | 2.4.1 | **Iteration 1** |  | 9.2d | 2005-09-15 A | 2005-09-28 A |  | 100% |  |  |  |  | 131.6h | 131.6h |
| 46 | 2.4.1.1 | **Analysis & Design** |  | 9.2d | 2005-09-15 A | 2005-09-28 A |  | 100% |  |  |  |  | 131.6h | 131.6h |
| 47 | 2.4.1.1.1 | **SDK Integration** |  | 9.2d | 2005-09-15 A | 2005-09-28 A |  | 100% |  |  |  |  | 131.6h | 131.6h |
| 48 | 2.4.1.1.1.1 | Documentation & Training Bootcamp |  | 2d | 2005-09-15 A | 2005-09-19 A |  | 100% |  |  |  | Eric | 16h | 16h |
| 49 | 2.4.1.1.1.2 | **Detail Use Case Development** |  | 7.2d | 2005-09-19 A | 2005-09-28 A |  | 100% |  |  |  |  | 60.8h | 60.8h |
| 50 | 2.4.1.1.1.2.1 | Use Cases |  | 6d | 2005-09-19 A | 2005-09-27 A | 48 | 100% |  |  |  | Eric | 48h | 48h |
| 51 | 2.4.1.1.1.2.2 | Use Case Review |  | 0.2d | 2005-09-27 A | 2005-09-27 A | 50 | 100% |  |  |  | Eric; Kunal; Vinay | 4.8h | 4.8h |
| 52 | 2.4.1.1.1.2.3 | Update/Baseline Use Cases |  | 1d | 2005-09-27 A | 2005-09-28 A | 51 | 100% |  |  |  | Eric | 8h | 8h |

| ID | WBS | Task | Type | Duration | Start | Finish | Predecessors | Complete | Remaining | Total slack | Constraint | Resources | Work | Actual work |
| --- | --- | --- | --- | --- | --- | --- | --- | --- | --- | --- | --- | --- | --- | --- |
| 53 | 2.4.1.1.1.3 | **Design** |  | 7.4d | 2005-09-15 A | 2005-09-26 A |  | 100% |  |  |  |  | 54.8h | 54.8h |
| 54 | 2.4.1.1.1.3.1 | Detail Design |  | 6d | 2005-09-15 A | 2005-09-23 A |  | 100% |  |  |  | Kunal [75%] | 36h | 36h |
| 55 | 2.4.1.1.1.3.2 | DD Update Draft Complete | milestone | 0d | 2005-09-23 A | 2005-09-23 A | 54 | 100% |  |  |  | Kunal [75%] |  |  |
| 56 | 2.4.1.1.1.3.3 | Design Review |  | 0.2d | 2005-09-23 A | 2005-09-23 A | 55 | 100% |  |  |  | Kunal; Vinay; SAIC; Avinash | 6.4h | 6.4h |
| 57 | 2.4.1.1.1.3.4 | Update Design |  | 1d | 2005-09-23 A | 2005-09-26 A | 56 | 100% |  |  |  | Kunal [75%] | 6h | 6h |
| 58 | 2.4.1.1.1.3.5 | Design Baselined/Sign Off |  | 0.2d | 2005-09-26 A | 2005-09-26 A | 57 | 100% |  |  |  | Kunal; Vinay; SAIC; Avinash | 6.4h | 6.4h |
| 59 | 2.4.2 | **Iteration 2** |  | 6.2d | 2005-09-23 A | 2005-10-03 |  | 89% | 0.65d | 114.55d |  |  | 85.04h | 69.04h |
| 60 | 2.4.2.1 | **Analysis & Design** |  | 6.2d | 2005-09-23 A | 2005-10-03 |  | 89% | 0.65d | 114.55d |  |  | 85.04h | 69.04h |
| 61 | 2.4.2.1.1 | **Enhanced Logging** |  | 6.2d | 2005-09-23 A | 2005-10-03 |  | 97% | 0.17d | 114.55d |  |  | 53.04h | 45.04h |
| 62 | 2.4.2.1.1.1 | **Detail Use Case Development** |  | 3d | 2005-09-28 A | 2005-10-03 A |  | 100% |  |  |  |  | 24h | 24h |
| 63 | 2.4.2.1.1.1.1 | Level 2 Use Cases |  | 3d | 2005-09-28 A | 2005-10-03 A | 49 | 100% |  |  |  | Eric | 24h | 24h |
| 64 | 2.4.2.1.1.2 | **Design** |  | 4.4d | 2005-09-23 A | 2005-09-29 |  | 95% | 0.2d | 116.35d |  |  | 29.04h | 21.04h |
| 65 | 2.4.2.1.1.2.1 | Detail Design |  | 3d | 2005-09-23 A | 2005-09-28 A | 54 | 100% |  |  |  | Vinay [50%] | 12h | 12h |
| 66 | 2.4.2.1.1.2.2 | Design Review |  | 0.2d | 2005-09-28 A | 2005-09-28 A | 65 | 100% |  |  |  | Kunal; Vinay; Eric; Charles | 5.04h | 5.04h |
| 67 | 2.4.2.1.1.2.3 | Update Design |  | 1d | 2005-09-28 A | 2005-09-29 A | 66 | 100% |  |  |  | Vinay [50%] | 4h | 4h |
| 68 | 2.4.2.1.1.2.4 | Design Baselined/Sign Off |  | 0.2d | 2005-09-29 | 2005-09-29 | 67 |  |  | 109.93d |  | Kunal; Vinay; Eric; Charles; Avinash | 8h |  |
| 69 | 2.4.2.1.2 | **Design** |  | 4d | 2005-09-27 A | 2005-09-30 |  | 75% | 1d | 115d |  |  | 32h | 24h |
| 70 | 2.4.2.1.2.1 | Object Instance Security |  | 1d | 2005-09-27 A | 2005-09-27 A |  | 100% |  |  | start no earlier than 2005-09-27 | Vinay | 8h | 8h |
| 71 | 2.4.2.1.2.2 | Grid Security |  | 1d | 2005-09-28 A | 2005-09-28 A | 70 | 100% |  |  |  | Vinay | 8h | 8h |
| 72 | 2.4.2.1.2.3 | HTTP Request |  | 1d | 2005-09-29 | 2005-09-29 | 71 |  |  | 109.58d |  | Vinay | 8h |  |
| 73 | 2.4.2.1.2.4 | SOP List |  | 1d | 2005-09-30 A | 2005-09-30 A | 72 | 100% |  |  |  | Vinay | 8h | 8h |
| 74 | 2.4.3 | **Iteration 3** |  | 26.25d | 2005-10-03 A | 2005-11-08 A |  | 100% |  |  |  |  | 56h | 56h |
| 75 | 2.4.3.1 | **Analysis & Design** |  | 26.25d | 2005-10-03 A | 2005-11-08 A |  | 100% |  |  |  |  | 56h | 56h |
| 76 | 2.4.3.1.1 | **Hibernate Upgrade** |  | 16.7d | 2005-10-17 A | 2005-11-08 A |  | 100% |  |  |  |  | 16h | 16h |
| 77 | 2.4.3.1.1.1 | Define Approach |  | 15d | 2005-10-17 A | 2005-11-04 A |  | 100% |  |  | start no earlier than 2005-10-17 | Charles [10%] | 12h | 12h |
| 78 | 2.4.3.1.1.2 | Approach Review |  | 0.2d | 2005-11-07 A | 2005-11-07 A | 77 | 100% |  |  |  | Kunal [75%]; Charles | 2.8h | 2.8h |
| 79 | 2.4.3.1.1.3 | Update Approach |  | 1.5d | 2005-11-07 A | 2005-11-08 A | 78 | 100% |  |  |  | Charles [10%] | 1.2h | 1.2h |
| 80 | 2.4.3.1.1.4 | Approach Baselined/Sign Off | milestone | 0d | 2005-11-08 A | 2005-11-08 A | 79 | 100% |  |  |  | Charles |  |  |

| ID | WBS | Task | Type | Duration | Start | Finish | Predecessors | Complete | Remaining | Total slack | Free slack | Constraint | Resources | Work | Actual work |
| --- | --- | --- | --- | --- | --- | --- | --- | --- | --- | --- | --- | --- | --- | --- | --- |
| 81 | 2.4.3.1.2 | **Authorization Caching** |  | 5d | 2005-10-03 A | 2005-10-10 A |  | 100% |  |  |  |  |  | 40h | 40h |
| 82 | 2.4.3.1.2.1 | **Detail Use Case Development** |  | 5d | 2005-10-03 A | 2005-10-10 A |  | 100% |  |  |  |  |  | 40h | 40h |
| 83 | 2.4.3.1.2.1.1 | Use Case # |  | 5d | 2005-10-03 A | 2005-10-10 A | 63 | 100% |  |  |  |  | Eric | 40h | 40h |
| 84 | 2.4.4 | **Iteration 4** |  | 57.42d | 2005-10-10 A | 2006-01-04 |  | 80% | 11.67d | 52.13d |  |  |  | 240h | 191.2h |
| 85 | 2.4.4.1 | **Test Plan** |  | 57.42d | 2005-10-10 A | 2006-01-04 | 83 | 68% | 18.43d | 52.13d |  |  |  | 152h | 103.2h |
| 86 | 2.4.4.1.1 | Overall Test Plan |  | 5d | 2005-10-10 A | 2005-10-17 A |  | 100% |  |  |  |  | Eric | 40h | 40h |
| 87 | 2.4.4.1.2 | SDK Integration |  | 3d | 2005-10-17 A | 2005-10-20 | 86 | 90% | 0.3d | 93.13d | 0d |  | Eric | 24h | 21.6h |
| 88 | 2.4.4.1.3 | Regression Tests for Hibernate Upgrade |  | 2d | 2005-10-20 A | 2005-10-24 A | 87 | 100% |  |  |  |  | Eric | 16h | 16h |
| 89 | 2.4.4.1.4 | Enhanced Logging |  | 4d | 2005-12-28 A | 2006-01-04 | 110 | 80% | 0.8d | 52.13d |  |  | Brian | 32h | 25.6h |
| 90 | 2.4.4.1.5 | SOP Check (existing and new) |  | 5d | 2005-11-01 | 2005-11-07 |  |  |  | 82.58d |  | start no earlier than 2005-11-01 | Charles | 40h |  |
| 91 | 2.4.4.2 | Cummalative Requirements Document |  | 5d | 2005-11-08 A | 2005-11-15 A | 90 | 100% |  |  |  |  | Eric | 40h | 40h |
| 92 | 2.4.4.3 | Traceability Matrix |  | 6d | 2005-11-16 A | 2005-11-23 A | 91 | 100% |  |  |  |  | Eric | 48h | 48h |
| 93 | 2.5 | **Construction Phase** |  | 101.72d | 2005-09-26 A | 2006-02-22 |  | 45% | 56.15d | 17.63d |  |  |  | 1454.64h | 592.65h |
| 94 | 2.5.1 | **Iteration 1** |  | 63.22d | 2005-09-26 A | 2005-12-28 |  | 82% | 11.59d | 56.13d |  |  |  | 489.44h | 341.55h |
| 95 | 2.5.1.1 | **SDK Integration** |  | 63.22d | 2005-09-26 A | 2005-12-28 |  | 79% | 13.01d | 56.13d |  |  |  | 428.64h | 280.75h |
| 96 | 2.5.1.1.1 | **Development and Unit Test** |  | 51.22d | 2005-09-26 A | 2005-12-09 |  | 97% | 1.45d | 68.13d |  |  |  | 289h | 273.55h |
| 97 | 2.5.1.1.1.1 | Merging ListProxy and SDKLIistProxy |  | 6d | 2005-09-26 A | 2005-10-04 A | 58 | 100% |  |  |  |  | Kunal [75%] | 36h | 36h |
| 98 | 2.5.1.1.1.2 | Merging ApplicationService and SDKApplicationService |  | 5.75d | 2005-10-04 A | 2005-10-12 A | 97 | 100% |  |  |  |  | Kunal [75%] | 34.5h | 34.5h |
| 99 | 2.5.1.1.1.3 | Business methods secured at class level |  | 9.17d | 2005-10-21 A | 2005-11-03 A | 116 | 100% |  |  |  |  | Kunal [75%] | 55h | 55h |
| 100 | 2.5.1.1.1.4 | Merge Build file to have single generation process |  | 9d | 2005-11-03 A | 2005-11-17 A | 99 | 100% |  |  |  |  | Kunal [75%] | 54h | 54h |
| 101 | 2.5.1.1.1.5 | Code Review |  | 0.38d | 2005-11-17 | 2005-11-17 | 100 |  |  | 76.04d |  |  | Kunal; SAIC | 6h |  |
| 102 | 2.5.1.1.1.6 | Flag to add writeable apis to generated code |  | 4d | 2005-11-17 A | 2005-11-23 A | 101 | 100% |  |  |  |  | Kunal [75%] | 24h | 24h |
| 103 | 2.5.1.1.1.7 | Turn Security off by default |  | 4d | 2005-11-23 A | 2005-12-01 A | 102 | 100% |  |  |  |  | Kunal [75%] | 24h | 24h |
| 104 | 2.5.1.1.1.8 | Enhance Security Error Reporting |  | 2.5d | 2005-12-01 A | 2005-12-06 A | 103 | 100% |  |  |  |  | Kunal [75%] | 15h | 15h |
| 105 | 2.5.1.1.1.9 | Code Merge and Cleanup |  | 5.75d | 2005-11-23 A | 2005-12-09 | 104 | 90% | 0.57d | 2.08d | 0d |  | Kunal [75%] | 34.5h | 31.05h |
| 106 | 2.5.1.1.1.10 | Code Review |  | 0.38d | 2005-12-09 | 2005-12-09 | 105 |  |  | 0.88d | 0d |  | Kunal; SAIC | 6h |  |
| 107 | 2.5.1.1.1.11 | Development and Unit Test Complete | milestone | 0d | 2005-12-09 | 2005-12-09 | 106 |  |  | 0.88d | 0d |  | Kunal [75%] |  |  |

| ID | WBS | Task | Duration | Start | Finish | Predecessors | Complete | Remaining | Total slack | Free slack | Constraint | Resources | Work | Actual work |
| --- | --- | --- | --- | --- | --- | --- | --- | --- | --- | --- | --- | --- | --- | --- |
| 108 | 2.5.1.1.2 | **Integration Test** | 12d | 2005-12-09 A | 2005-12-28 |  | 10% | 10.8d | 0.88d |  |  |  | 139.64h | 7.2h |
| 109 | 2.5.1.1.2.1 | Develop Integration Tests | 2d | 2005-12-09 A | 2005-12-13 | 107 | 60% | 0.8d | 0.88d | 0d |  | Kunal [75%] | 12h | 7.2h |
| 110 | 2.5.1.1.2.2 | Execute/Review Integration Tests | 10d | 2005-12-13 | 2005-12-28 | 109, 92 |  |  | 0.88d | 0d |  | Kunal [75%]; Charles; QA | 127.64h |  |
| 111 | 2.5.1.2 | **CSM Defect Fix** | 7d | 2005-10-12 A | 2005-10-20 A |  | 100% |  |  |  |  |  | 60.8h | 60.8h |
| 112 | 2.5.1.2.1 | Development and Unit Testing | 3d | 2005-10-12 A | 2005-10-14 A |  | 100% |  |  |  | start no earlier than 2005-10-12 | Kunal | 24h | 24h |
| 113 | 2.5.1.2.2 | Review Junit Test Cases | 0.2d | 2005-10-18 A | 2005-10-18 A | 112FS+1d | 100% |  |  |  |  | Charles; Kunal; Eric | 4.8h | 4.8h |
| 114 | 2.5.1.2.3 | QA Testing | 2d | 2005-10-17 A | 2005-10-18 A | 112 | 100% |  |  |  |  | Charles | 16h | 16h |
| 115 | 2.5.1.2.4 | Release Packaging | 1d | 2005-10-19 A | 2005-10-19 A | 114 | 100% |  |  |  |  | Kunal | 8h | 8h |
| 116 | 2.5.1.2.5 | Move to Production | 1d | 2005-10-20 A | 2005-10-20 A | 115 | 100% |  |  |  |  | Kunal | 8h | 8h |
| 117 | 2.5.2 | **Iteration 2** | 18.87d | 2005-12-09 A | 2006-01-06 |  | 29% | 13.38d | 0.88d |  |  |  | 209.2h | 57.1h |
| 118 | 2.5.2.1 | **Audit Trail Enhancement** | 18.87d | 2005-12-09 A | 2006-01-06 |  | 29% | 13.38d | 0.88d |  |  |  | 209.2h | 57.1h |
| 119 | 2.5.2.1.1 | **Development and Unit Test** | 18.55d | 2005-12-09 A | 2006-01-06 | 139 | 38% | 11.41d | 0.32d |  |  |  | 161.2h | 57.1h |
| 120 | 2.5.2.1.1.1 | Transaction Behavior Prototype | 3d | 2005-12-09 A | 2005-12-13 A |  | 100% |  |  |  |  | Art | 24h | 24h |
| 121 | 2.5.2.1.1.2 | Design Update | 0.5d | 2005-12-14 | 2005-12-14 | 120 |  |  | 0.32d | 0d |  | Art | 4h |  |
| 122 | 2.5.2.1.1.3 | UPT User Lockout | 1d | 2005-12-14 | 2005-12-15 | 121 |  |  | 0.32d | 0d |  | Art | 8h |  |
| 123 | 2.5.2.1.1.4 | **JDBC Appender Modification** | 12.55d | 2005-12-15 A | 2006-01-05 |  | 63% | 4.62d | 0.32d |  |  |  | 57.2h | 33.1h |
| 124 | 2.5.2.1.1.4.1 | Add User, Session Id to database schema | 0.25d | 2005-12-15 A | 2005-12-15 | 122 | 95% | 0.01d | 4.22d | 0d |  | Art | 2h | 1.9h |
| 125 | 2.5.2.1.1.4.2 | Retrieve User and Session Info | 2d | 2005-12-15 A | 2005-12-19 | 124 | 95% | 0.1d | 2.32d | 0d |  | Art | 16h | 15.2h |
| 126 | 2.5.2.1.1.4.3 | Code Review | 0.3d | 2005-12-19 | 2005-12-20 | 125 |  |  | 0.32d | 0d |  | Art; Kunal; Charles | 7.2h |  |
| 127 | 2.5.2.1.1.4.4 | Update Browser | 4d | 2005-12-29 A | 2006-01-05 | 132 | 50% | 2d | 0.32d | 0d |  | Art | 32h | 16h |
| 128 | 2.5.2.1.1.5 | **Object State Logger** | 6d | 2005-12-20 | 2005-12-29 |  |  |  | 2.32d |  |  |  | 48h |  |
| 129 | 2.5.2.1.1.5.1 | Message Generation Utility | 1d | 2005-12-20 | 2005-12-21 | 126 |  |  | 0.32d | 0d |  | Art | 8h |  |
| 130 | 2.5.2.1.1.5.2 | **Application Configuration** | 5d | 2005-12-21 | 2005-12-29 |  |  |  | 2.32d |  |  |  | 40h |  |
| 131 | 2.5.2.1.1.5.2.1 | Object Configuration | 3d | 2005-12-21 | 2005-12-27 | 129 |  |  | 0.32d | 0d |  | Art | 24h |  |
| 132 | 2.5.2.1.1.5.2.2 | Logging Switch | 2d | 2005-12-27 | 2005-12-29 | 131 |  |  | 0.32d | 0d |  | Art | 16h |  |
| 133 | 2.5.2.1.1.6 | Code Review | 0.5d | 2006-01-05 | 2006-01-05 | 127 |  |  | 0.32d | 0d |  | Art; Kunal; Charles | 12h |  |
| 134 | 2.5.2.1.1.7 | Test Documentation | 1d | 2006-01-05 | 2006-01-06 | 133 |  |  | 0.32d |  |  | Art | 8h |  |

| ID | WBS | Task | Type | Duration | Start | Finish | Predecessors | Complete | Remaining | Total slack | Free slack | Constraint | Resources | Work | Actual work |
| --- | --- | --- | --- | --- | --- | --- | --- | --- | --- | --- | --- | --- | --- | --- | --- |
| 135 | 2.5.2.1.2 | **CSM Audit Integration** |  | 5d | 2005-12-28 | 2006-01-05 |  |  |  | 0.88d | 0d |  |  | 40h |  |
| 136 | 2.5.2.1.2.1 | Object State/Event Logging |  | 5d | 2005-12-28 | 2006-01-05 | 110 |  |  | 0.88d |  | start no earlier than 2005-12-28 | Kunal | 40h |  |
| 137 | 2.5.2.1.3 | CSM Integration Tests |  | 1d | 2006-01-05 | 2006-01-06 | 135 |  |  | 0.88d | 0d |  | Art | 8h |  |
| 138 | 2.5.3 | **Iteration 3** |  | 34.87d | 2005-11-14 A | 2006-01-05 |  | 77% | 7.92d | 51.13d |  |  |  | 224h | 194h |
| 139 | 2.5.3.1 | **Hibernate and JDK Upgrades** |  | 17d | 2005-11-14 A | 2005-12-08 A |  | 100% |  |  |  |  |  | 194h | 194h |
| 140 | 2.5.3.1.1 | Development and Unit Test |  | 9d | 2005-11-14 A | 2005-11-28 A |  | 100% |  |  |  | start no earlier than 2005-11-14 | Art | 72h | 72h |
| 141 | 2.5.3.1.2 | Development and Unit Test Complete | milestone | 0d | 2005-11-28 A | 2005-11-28 A | 140 | 100% |  |  |  |  | Art |  |  |
| 142 | 2.5.3.1.3 | Regression/Integration Testing |  | 7d | 2005-11-29 A | 2005-12-07 A | 141 | 100% |  |  |  |  | Art; Charles | 112h | 112h |
| 143 | 2.5.3.1.4 | Code Review |  | 0.25d | 2005-12-08 A | 2005-12-08 A | 142 | 100% |  |  |  |  | Art; Kunal | 4h | 4h |
| 144 | 2.5.3.1.5 | Test Documentation |  | 0.75d | 2005-12-08 A | 2005-12-08 A | 143 | 100% |  |  |  |  | Art | 6h | 6h |
| 145 | 2.5.3.2 | **Authorization Caching** |  | 5d | 2005-12-28 | 2006-01-05 |  |  |  | 51.13d |  |  |  | 30h |  |
| 146 | 2.5.3.2.1 | Gather Requirements |  | 5d | 2005-12-28 | 2006-01-05 | 110 |  |  | 44.71d |  |  | Kunal [75%] | 30h |  |
| 147 | 2.5.4 | **Iteration 4** |  | 32.5d | 2006-01-06 | 2006-02-22 |  |  |  | 0.88d |  |  |  | 532h |  |
| 148 | 2.5.4.1 | **Document Creation** |  | 26.5d | 2006-01-16 | 2006-02-22 |  |  |  | 0.88d |  |  |  | 258h |  |
| 149 | 2.5.4.1.1 | SDK Programmers Guide |  | 10d | 2006-01-23 | 2006-02-06 | 162 |  |  | 5.92d | 0d |  | Kunal | 80h |  |
| 150 | 2.5.4.1.2 | Review |  | 0.25d | 2006-02-06 | 2006-02-07 | 149 |  |  | 5.92d | 0d |  | Kunal; QA; Art; Charles | 8h |  |
| 151 | 2.5.4.1.3 | Update from Review |  | 2d | 2006-02-07 | 2006-02-09 | 150 |  |  | 5.92d | 0d |  | Kunal | 16h |  |
| 152 | 2.5.4.1.4 | CSM Guide For Application Developers |  | 10d | 2006-01-16 | 2006-01-30 | 161 |  |  | 0.88d | 0d |  | Art [50%] | 40h |  |
| 153 | 2.5.4.1.5 | CSM Guide For Application Developers Cont'd |  | 2d | 2006-01-30 | 2006-02-01 | 152 |  |  | 0.88d | 0d |  | Art | 16h |  |
| 154 | 2.5.4.1.6 | Review |  | 0.25d | 2006-02-01 | 2006-02-02 | 153 |  |  | 0.88d | 0d |  | Kunal; Resource 3; Art; Charles | 8h |  |
| 155 | 2.5.4.1.7 | Update From Review |  | 2d | 2006-02-02 | 2006-02-06 | 154 |  |  | 0.88d | 0d |  | Art | 16h |  |
| 156 | 2.5.4.1.8 | Common Logger |  | 7d | 2006-02-09 | 2006-02-20 | 151 |  |  | 5.92d | 0d |  | Kunal | 56h |  |
| 157 | 2.5.4.1.9 | Review |  | 0.25d | 2006-02-20 | 2006-02-20 | 156 |  |  | 5.92d | 0d |  | Kunal | 2h |  |
| 158 | 2.5.4.1.10 | Update from Review |  | 2d | 2006-02-20 | 2006-02-22 | 157 |  |  | 5.92d | 0d |  | Kunal | 16h |  |
| 159 | 2.5.4.1.11 | Baseline/SignOff Documents | milestone | 0d | 2006-02-22 | 2006-02-22 | 158 |  |  | 5.92d | 0d |  | Kunal; Charles |  |  |

| ID | WBS | Task | Type | Duration | Start | Finish | Predecessors | Total slack | Free slack | Constraint | Resources | Work |
| --- | --- | --- | --- | --- | --- | --- | --- | --- | --- | --- | --- | --- |
| 160 | 2.5.4.2 | **QA Testing** |  | 26d | 2006-01-06 | 2006-02-13 |  | 0.88d |  |  |  | 274h |
| 161 | 2.5.4.2.1 | Technical Test Development |  | 6d | 2006-01-06 | 2006-01-16 | 137, 134 | 0.88d | 0d |  | Kunal [75%]; Art | 84h |
| 162 | 2.5.4.2.2 | SDK Defect Fixes |  | 5d | 2006-01-16 | 2006-01-23 | 161 | 5.92d | 0d |  | Kunal [75%] | 30h |
| 163 | 2.5.4.2.3 | Execution/Defect Fixes |  | 10d | 2006-01-23 | 2006-02-06 | 162 | 10.13d | 0d |  | Art [50%]; QA | 120h |
| 164 | 2.5.4.2.4 | Testing Report Creation/Requirements Matrix Update |  | 5d | 2006-02-06 | 2006-02-13 | 163 | 10.13d | 0d |  | QA | 40h |
| 165 | 2.6 | **Transition Phase** |  | 29d | 2006-02-06 | 2006-03-17 |  | 0.88d |  |  |  | 548.8h |
| 166 | 2.6.1 | **Stage Testing** |  | 14.75d | 2006-02-06 | 2006-02-24 |  | 0.88d |  |  |  | 136h |
| 167 | 2.6.1.1 | Deployment Documentation |  | 3d | 2006-02-06 | 2006-02-09 | 155 | 0.88d | 0d |  | Art | 24h |
| 168 | 2.6.1.2 | Stage Test Preparation |  | 4d | 2006-02-13 | 2006-02-17 | 164 | 10.13d | 0d |  | QA | 32h |
| 169 | 2.6.1.3 | Deploy to Stage | milestone | 0d | 2006-02-16 | 2006-02-16 |  | 22d |  | start no earlier than 2006-02-16 | Art |  |
| 170 | 2.6.1.4 | Execute Stage Tests |  | 5d | 2006-02-17 | 2006-02-24 | 168 | 10.13d | 0d |  | QA | 40h |
| 171 | 2.6.1.5 | Defect Fixes/Test Support |  | 5d | 2006-02-17 | 2006-02-24 | 172 | 0.88d | 0d |  | Art | 40h |
| 172 | 2.6.2 | 21 Part CFR 11 Readiness |  | 6d | 2006-02-09 | 2006-02-17 | 167 | 0.88d | 0d |  | Art | 48h |
| 173 | 2.6.2 | Defect Fixes/SOP Updates/Documentation Review Support/Presentations |  | 10d | 2006-02-22 | 2006-03-10 | 159 | 5.92d |  |  | Kunal [75%]; Resource 3 | 84.8h |
| 174 | 2.6.4 | Testing Report |  | 5d | 2006-02-24 | 2006-03-03 | 170 | 10.13d |  |  | QA | 40h |
| 175 | 2.6.5 | **Deployment to Production** |  | 15d | 2006-02-24 | 2006-03-17 |  | 0.88d |  |  |  | 240h |
| 176 | 2.6.5.1 | Update Zope Site |  | 5d | 2006-02-24 | 2006-03-03 | 171 | 0.88d | 0d |  | Art | 40h |
| 177 | 2.6.5.2 | Work With Operations/ Finalize Builds |  | 5d | 2006-03-03 | 2006-03-10 | 176 | 5.88d | 0d |  | Art | 40h |
| 178 | 2.6.5.3 | Gforge Updates |  | 10d | 2006-03-03 | 2006-03-17 | 176 | 0.88d |  |  | QA [50%]; Kunal [50%] | 80h |
| 179 | 2.6.5.3 | 21 CFR Part 11 Final Validation Readiness Prep |  | 10d | 2006-03-03 | 2006-03-17 | 176 | 0.88d |  |  | QA [50%]; Kunal [50%] | 80h |
| 180 | 2.7 | CSM 3.1 Production Candidate | milestone | 0d | 2006-03-10 | 2006-03-10 | 177 | 5.88d |  |  | Art |  |
| 181 | 2.8 | CSM 3.1 Production Deployment | milestone | 0d | 2006-03-17 | 2006-03-17 |  | 1d |  | start no earlier than 2006-03-17 | Art |  |
| 182 | 2.9 | CSM 3.1 Released | milestone | 0d | 2006-03-20 | 2006-03-20 |  | 0d |  | start no earlier than 2006-03-20 | Art |  |
