# NCICBSecurityService_phase3

Schedule from MS Project, 2005-04-01 to 2005-11-30, A marks actual dates.
Home

## Calendars

- Standard: Mon-Fri 08:00-12:00, 13:00-17:00; Sat-Sun off.

## Resources

| Resource |
| --- |
| Vinay |
| Resource 1 |
| Brian |
| Kalpesh |
| Kunal |
| Eric |
| Charles |
| Team |
| Steve |
| JJ |
| Kunal Eric |
| Viany |
| New |
| XYZ |

## Schedule

| ID | WBS | Task | Duration | Start | Finish | Predecessors | Complete | Remaining | Total slack | Free slack | Constraint | Resources | Work | Actual work |
| --- | --- | --- | --- | --- | --- | --- | --- | --- | --- | --- | --- | --- | --- | --- |
| 1 | 1 | **Security Module (Release four)** | 174d? | 2005-04-01 A | 2005-11-30 |  | 4% | 167.88d? | 0d |  |  |  | 7229.44h | 532h |
| 2 | 1.1 | Application Integration and Support | 174d? | 2005-04-01 | 2005-11-30 |  |  |  | 0d |  | start no earlier than 2005-04-01 | Kunal [25%]; Vinay [5%] | 348.4h |  |
| 3 | 1.2 | **Inception** | 34d? | 2005-04-01 A | 2005-05-18 |  | 52% | 16.33d? | 140d |  |  |  | 803.6h | 484h |
| 4 | 1.2.1 | Phase 3 Evaluation | 5.25d | 2005-04-04 A | 2005-04-11 |  | 67% | 1.75d | 167.75d |  | start no earlier than 2004-08-02 | Vinay; Kunal | 56h | 28h |
| 5 | 1.2.2 | RI Fixing | 3d | 2005-04-11 A | 2005-04-14 A | 4 | 100% |  |  |  |  | Kunal; Brian | 48h | 48h |
| 6 | 1.2.3 | RI documentation | 7d | 2005-04-01 A | 2005-04-11 A |  | 100% |  |  |  | finish no earlier than 2005-04-11 | Kunal; Eric | 112h | 112h |
| 7 | 1.2.4 | Ri Testing and release | 4d | 2005-04-12 A | 2005-04-15 A | 6 | 100% |  |  |  | finish no earlier than 2005-04-15 | Kunal; Eric; Vinay | 96h | 96h |
| 8 | 1.2.5 | caBIG Annual Meeting | 2d | 2005-04-12 A | 2005-04-13 A | 7 | 100% |  |  |  |  | Vinay; Eric; Kunal; Kalpesh | 64h | 64h |
| 9 | 1.2.6 | Research & Analysis | 5d | 2005-04-14 | 2005-04-20 | 8 |  |  | 160d |  |  | Vinay; Kunal | 80h |  |
| 10 | 1.2.7 | CM configuration | 2d | 2005-04-21 A | 2005-04-22 A | 9 | 100% |  |  |  | start no earlier than 2005-04-20 | Eric; Kunal | 32h | 32h |
| 11 | 1.2.8 | Overall Scope and Vision Document | 5d | 2005-04-11 A | 2005-04-21 A |  | 100% |  |  |  | finish no earlier than 2005-04-21 | Vinay; Eric; Kunal | 104h | 104h |
| 12 | 1.2.9 | SDK Research & Analysis | 2d | 2005-04-26 | 2005-04-27 |  |  |  | 1d | 0d | start no earlier than 2005-04-26 | Vinay | 16h |  |
| 13 | 1.2.10 | SDK Scope/Vision Document | 2d | 2005-04-27 | 2005-04-28 | 12FS-1d |  |  | 1d | 0d | start no earlier than 2005-04-27 | Vinay | 16h |  |
| 14 | 1.2.11 | Scope Vision Review & Discussion | 1d | 2005-04-29 | 2005-04-29 | 13 |  |  | 1d | 0d |  |  |  |  |
| 15 | 1.2.12 | Supplentary Specifications | 3d | 2005-05-04 | 2005-05-06 | 25 |  |  | 140d | 0d | start no earlier than 2004-09-01 | Vinay; Kunal [15%] | 27.6h |  |
| 16 | 1.2.13 | Review Supplementart Specs | 1d | 2005-05-09 | 2005-05-09 | 15 |  |  | 147d |  |  | Eric | 8h |  |
| 17 | 1.2.14 | SWG Meeting | 0.75d? | 2005-05-05 | 2005-05-05 |  |  |  | 149.25d |  | start no earlier than 2005-05-05 | Vinay; Kunal; Eric; Charles | 24h |  |
| 18 | 1.2.15 | Fuctional Specifications | 7d | 2005-05-09 | 2005-05-17 | 15 |  |  | 140d | 0d |  | Vinay; Kunal | 112h |  |
| 19 | 1.2.16 | Identify Risk List | 0.5d | 2005-05-17 | 2005-05-18 | 18 |  |  | 140d | 0d |  | Charles; Vinay | 4h |  |
| 20 | 1.2.17 | Update Detail task plan | 0.5d | 2005-05-18 | 2005-05-18 | 19 |  |  | 140d |  | start no earlier than 2005-04-11 | Vinay; Charles | 4h |  |
| 21 | 1.3 | **3.0.1 Release** | 45d | 2005-04-25 A | 2005-06-24 |  | 3% | 43.58d | 0d |  |  |  | 944.8h | 48h |
| 22 | 1.3.1 | Scope Document | 3d | 2005-04-25 A | 2005-04-27 A |  | 100% |  |  |  | start no earlier than 2005-04-22 | Vinay; Kunal | 48h | 48h |
| 23 | 1.3.2 | **Iteration I** | 16d | 2005-04-28 | 2005-05-19 | 22 |  |  | 1d | 0d |  |  | 390.4h |  |
| 24 | 1.3.2.1 | **API Changes & Bug Fixes** | 9d | 2005-05-02 | 2005-05-12 |  |  |  | 1d | 0d |  |  | 102.4h |  |
| 25 | 1.3.2.1.1 | Modify API for Negative Privileges | 2d | 2005-05-02 | 2005-05-03 | 14 |  |  | 1d | 0d | start no earlier than 2005-05-02 | Vinay [10%]; Kunal | 17.6h |  |
| 26 | 1.3.2.1.2 | Modify API for Primitive Data Types | 2d | 2005-05-03 | 2005-05-04 | 25FS-1d |  |  | 7d |  |  | Vinay [10%]; Kunal | 17.6h |  |
| 27 | 1.3.2.1.3 | Cross Database Compatibility | 7d | 2005-05-04 | 2005-05-12 | 25 |  |  | 1d |  |  | Vinay [20%]; Kunal | 67.2h |  |

| ID | WBS | Task | Duration | Start | Finish | Predecessors | Total slack | Free slack | Constraint | Resources | Work |
| --- | --- | --- | --- | --- | --- | --- | --- | --- | --- | --- | --- |
| 28 | 1.3.2.2 | **UPT Changes & Bug Fixes** | 10d | 2005-04-28 | 2005-05-11 |  | 2d | 1d |  |  | 200h |
| 29 | 1.3.2.2.1 | UI Bug Fixes | 3d | 2005-04-28 | 2005-05-02 | 22 | 2d | 0d |  | Eric | 24h |
| 30 | 1.3.2.2.2 | Modify Association Screen | 4d | 2005-05-02 | 2005-05-05 | 29FS-1d | 6d |  |  | Kunal; Eric | 64h |
| 31 | 1.3.2.2.3 | Cross Browser Compatibility | 7d | 2005-05-03 | 2005-05-11 | 29 | 2d |  |  | Eric; Kunal | 112h |
| 32 | 1.3.2.3 | Integration Test - API and UPT Changes | 3d | 2005-05-13 | 2005-05-17 | 24, 28 | 1d | 0d |  | Kunal; Eric | 48h |
| 33 | 1.3.2.4 | Bug Fix | 1d | 2005-05-17 | 2005-05-17 | 24, 28 | 3d |  | finish no earlier than 2005-05-17 | Kunal; Eric | 16h |
| 34 | 1.3.2.5 | Test on QA | 1d | 2005-05-18 | 2005-05-18 | 32 | 1d | 0d |  | Eric; Kunal | 16h |
| 35 | 1.3.2.6 | Release for FCCC only UPT.war | 1d | 2005-05-19 | 2005-05-19 | 34 | 1d |  |  | Kunal | 8h |
| 36 | 1.3.3 | **Iteration II** | 42d | 2005-04-28 | 2005-06-24 |  | 0d |  |  |  | 506.4h |
| 37 | 1.3.3.1 | **Open Source Initiative** | 11d | 2005-04-28 | 2005-05-12 |  | 31d |  |  |  | 22h |
| 38 | 1.3.3.1.1 | Modify nightly build script | 3d | 2005-04-28 | 2005-05-02 | 22 | 31d | 0d |  | Brian [25%] | 6h |
| 39 | 1.3.3.1.2 | Update Junit Test cases | 5d | 2005-05-03 | 2005-05-09 | 38 | 31d | 0d |  | Brian [25%] | 10h |
| 40 | 1.3.3.1.3 | Clean up Code base | 3d | 2005-05-10 | 2005-05-12 | 39 | 31d |  | start no earlier than 2005-05-10 | Brian [25%] | 6h |
| 41 | 1.3.3.2 | **API Changes & Bug Fixes** | 11d | 2005-05-20 | 2005-06-03 |  | 1d |  |  |  | 116.4h |
| 42 | 1.3.3.2.1 | Standardize Privileges | 1d | 2005-05-23 | 2005-05-23 | 23 | 24d |  | start no earlier than 2005-05-20 | Vinay [25%] | 2h |
| 43 | 1.3.3.2.2 | Configurable Queries | 4d | 2005-05-20 | 2005-05-25 | 23 | 22d |  |  | XYZ | 32h |
| 44 | 1.3.3.2.3 | **Provide new Methods for Reporting & Changes for Caching** | 11d | 2005-05-20 | 2005-06-03 | 23 | 0d |  |  |  | 82.4h |
| 45 | 1.3.3.2.3.1 | Design | 4d | 2005-05-20 | 2005-05-25 |  | 0d |  |  | Kunal; Vinay [10%] | 26.4h |
| 46 | 1.3.3.2.3.2 | Implementation | 7d | 2005-05-26 | 2005-06-03 | 45 | 0d |  |  | XYZ | 56h |
| 47 | 1.3.3.3 | **UPT Changes & Bug Fixes** | 13d | 2005-05-26 | 2005-06-13 |  | 4d |  |  |  | 64h |
| 48 | 1.3.3.3.1 | Modify UPT for Standard Privileges | 2d | 2005-05-26 | 2005-05-27 | 45 | 15d | 0d |  | Kunal | 16h |
| 49 | 1.3.3.3.2 | Provide Reporting Functionality | 6d | 2005-06-06 | 2005-06-13 | 44 | 0d |  |  | XYZ | 48h |
| 50 | 1.3.3.4 | **RI Changes & Bug Fixes** | 3d | 2005-05-30 | 2005-06-01 |  | 15d |  |  |  | 24h |
| 51 | 1.3.3.4.1 | Modify RI to use new APIs | 3d | 2005-05-30 | 2005-06-01 | 48 | 15d | 0d |  | Kunal | 24h |

| ID | WBS | Task | Type | Duration | Start | Finish | Predecessors | Total slack | Free slack | Constraint | Resources | Work |
| --- | --- | --- | --- | --- | --- | --- | --- | --- | --- | --- | --- | --- |
| 52 | 1.3.3.5 | **Update Documentations** |  | 10d | 2005-06-02 | 2005-06-15 |  | 7d |  |  |  | 48h |
| 53 | 1.3.3.5.1 | RI Guide |  | 2d | 2005-06-02 | 2005-06-03 | 51 | 15d |  | start no earlier than 2005-06-02 | Kunal | 16h |
| 54 | 1.3.3.5.2 | UPT Guide Changes |  | 2d | 2005-06-14 | 2005-06-15 | 49 | 7d |  |  | XYZ | 16h |
| 55 | 1.3.3.5.3 | Developers Guide |  | 2d | 2005-06-06 | 2005-06-07 | 46, 57 | 13d |  |  | Eric | 16h |
| 56 | 1.3.3.6 | **Testing** |  | 25d | 2005-05-20 | 2005-06-23 |  | 1d |  |  |  | 224h |
| 57 | 1.3.3.6.1 | Developing Test Cases |  | 4d | 2005-05-20 | 2005-05-25 | 23 | 20d | 7d |  | Eric | 32h |
| 58 | 1.3.3.6.2 | Integration Test - API and UPT Changes |  | 4d | 2005-06-14 | 2005-06-17 | 49 | 0d |  |  | Eric | 32h |
| 59 | 1.3.3.6.3 | Bug Fix |  | 4d | 2005-06-14 | 2005-06-17 | 49 | 5d |  | finish no earlier than 2005-05-17 | Kunal; XYZ | 64h |
| 60 | 1.3.3.6.4 | Test on QA |  | 2d | 2005-06-20 | 2005-06-21 | 58 | 0d |  |  | Eric; Kunal; XYZ | 48h |
| 61 | 1.3.3.6.5 | Stage Testing |  | 2d | 2005-06-22 | 2005-06-23 | 60 | 0d |  |  | Kunal; XYZ; Eric | 48h |
| 62 | 1.3.3.7 | Releasing and Baselining |  | 1d | 2005-06-24 | 2005-06-24 | 61 | 0d |  |  | Kunal | 8h |
| 63 | 1.3.3.8 | Identify & Publish Requirements for out sourced components | milestone | 0d | 2005-06-24 | 2005-06-24 | 62 | 0d |  |  |  |  |
| 64 | 1.4 | SDK Release |  | 34d | 2005-05-02 | 2005-06-21 | 14 | 123d |  |  | Vinay [75%] | 204h |
| 65 | 1.5 | **Elaboration** |  | 20d | 2005-06-27 | 2005-07-22 | 21 | 0d |  |  |  | 815.04h |
| 66 | 1.5.1 | **Iteration I** |  | 20d | 2005-06-27 | 2005-07-22 |  | 0d |  |  |  | 464h |
| 67 | 1.5.1.1 | Detailed Iteration Release Plan |  | 1d | 2005-06-27 | 2005-06-27 |  | 18d | 0d | start no earlier than 2005-05-17 | Vinay | 8h |
| 68 | 1.5.1.2 | Research Prototype Development |  | 20d | 2005-06-27 | 2005-07-22 |  | 0d |  | start no earlier than 2005-04-26 | XYZ; Kunal | 320h |
| 69 | 1.5.1.3 | Level 1 - 2 Use Cases |  | 5d | 2005-06-27 | 2005-07-01 |  | 15d |  | start no earlier than 2005-05-17 | Vinay; Eric | 80h |
| 70 | 1.5.1.4 | Peer Review of Use Cases |  | 1d | 2005-06-27 | 2005-06-27 |  | 19d |  | start no earlier than 2005-05-24 | Eric | 8h |
| 71 | 1.5.1.5 | Risk List Priority |  | 1d | 2005-06-28 | 2005-06-28 | 67 | 18d |  |  | Vinay | 8h |
| 72 | 1.5.1.6 | **Finalize Requirements** |  | 2d | 2005-06-27 | 2005-06-28 |  | 0.44d |  |  |  | 40h |
| 73 | 1.5.1.6.1 | User Working Group Review |  | 1d | 2005-06-27 | 2005-06-27 |  | 0.44d | 0d | start no earlier than 2005-05-26 | XYZ; Vinay; Kunal; Eric; Charles | 40h |
| 74 | 1.5.1.6.2 | Stakeholder Sign Off |  | 1d | 2005-06-28 | 2005-06-28 | 73 | 0.44d | 0d | start no earlier than 2004-10-01 |  |  |
| 75 | 1.5.2 | **Iteration II** |  | 18.56d | 2005-06-27 | 2005-07-21 |  | 0.44d | 0d |  |  | 335.04h |
| 76 | 1.5.2.1 | Develop Architecture Prototype / Framework |  | 6d | 2005-06-29 | 2005-07-06 | 74 | 0.44d | 0d | finish no earlier than 2005-06-03 | Vinay; Kunal; XYZ | 144h |
| 77 | 1.5.2.2 | Software Architecture Document |  | 8d | 2005-07-07 | 2005-07-20 | 76 | 0.44d | 0d | start no earlier than 2005-06-02 | Vinay; Kunal; Eric; XYZ | 151.04h |
| 78 | 1.5.2.3 | Architecture Peer Review |  | 1d | 2005-06-27 | 2005-06-27 |  | 18d |  | start no earlier than 2005-06-07 | Kunal; Vinay; Eric; XYZ | 32h |
| 79 | 1.5.2.4 | Prioritize Risk List |  | 1d | 2005-07-20 | 2005-07-21 | 77 | 0.44d |  | start no earlier than 2004-10-26 | Vinay | 8h |
| 80 | 1.5.3 | Phase Review |  | 1d | 2005-07-21 | 2005-07-22 | 75 | 0.44d |  |  | Eric; Charles | 16h |

Notes:
- 74: An email was sent out to the group and no one responded. Hence this task has been marked as 100%

| ID | WBS | Task | Type | Duration | Start | Finish | Predecessors | Total slack | Free slack | Constraint | Resources | Work |
| --- | --- | --- | --- | --- | --- | --- | --- | --- | --- | --- | --- | --- |
| 81 | 1.6 | **Construction** |  | 64d | 2005-07-25 | 2005-10-20 | 65 | 0d |  |  |  | 3456h |
| 82 | 1.6.1 | **Iteration - SSO** |  | 53d | 2005-07-25 | 2005-10-05 |  | 3d |  |  |  | 824h |
| 83 | 1.6.1.1 | Detailed Iteration Plan |  | 1d | 2005-07-25 | 2005-07-25 |  | 3d | 0d | start no earlier than 2004-10-26 | Vinay; Kunal | 16h |
| 84 | 1.6.1.2 | **Design** |  | 9d | 2005-07-26 | 2005-08-05 |  | 3d | 0d |  |  | 128h |
| 85 | 1.6.1.2.1 | Level 3 - 4 Use Cases |  | 3d | 2005-07-26 | 2005-07-28 | 83 | 3d | 0d | start no earlier than 2004-10-27 | Kunal; Vinay | 48h |
| 86 | 1.6.1.2.2 | Use Case Model |  | 1d | 2005-07-29 | 2005-07-29 | 85 | 3d | 0d | start no earlier than 2004-10-27 | Vinay; Kunal | 16h |
| 87 | 1.6.1.2.3 | UML Sequence Diagram |  | 1d | 2005-08-01 | 2005-08-01 | 86 | 3d | 0d |  | Kunal | 8h |
| 88 | 1.6.1.2.4 | UML Class Diagram |  | 3d | 2005-08-02 | 2005-08-04 | 87 | 3d | 0d |  | Vinay | 24h |
| 89 | 1.6.1.2.5 | UML Activity Diagram |  | 1d | 2005-08-01 | 2005-08-01 | 86 | 7d |  | start no earlier than 2004-10-29 | Vinay | 8h |
| 90 | 1.6.1.2.6 | Design Review |  | 1d | 2005-08-05 | 2005-08-05 | 88 | 3d | 0d |  |  |  |
| 91 | 1.6.1.2.7 | Test Case Development |  | 3d | 2005-08-01 | 2005-08-03 | 86 | 5d |  |  | Eric | 24h |
| 92 | 1.6.1.3 | **Implementation** |  | 50d | 2005-07-25 | 2005-09-30 |  | 14d |  |  |  | 592h |
| 93 | 1.6.1.3.1 | Environment Setup |  | 2d | 2005-08-08 | 2005-08-09 | 90 | 11d | 0d | start no earlier than 2004-11-01 | Vinay; Kunal | 32h |
| 94 | 1.6.1.3.2 | Code Development |  | 30d | 2005-08-10 | 2005-09-20 | 93 | 11d | 0d | start no earlier than 2004-11-08 | Kunal; Vinay | 480h |
| 95 | 1.6.1.3.3 | Junit Test Development |  | 4d | 2005-07-25 | 2005-07-28 |  | 60d |  | start no earlier than 2005-07-15 | Kunal | 32h |
| 96 | 1.6.1.3.4 | Code Reviews |  | 6d | 2005-09-21 | 2005-09-28 | 94 | 11d | 0d | finish no earlier than 2004-11-15 | Charles | 48h |
| 97 | 1.6.1.3.5 | Bug Fixes |  | 2d | 2005-09-29 | 2005-09-30 | 96 | 14d |  | finish no earlier than 2005-08-03 |  |  |
| 98 | 1.6.1.4 | **Unit Testing** |  | 3d | 2005-07-25 | 2005-07-27 |  | 61d |  |  |  | 24h |
| 99 | 1.6.1.4.1 | Perform Testing |  | 3d | 2005-07-25 | 2005-07-27 |  | 61d |  | finish no earlier than 2005-07-26 | Kunal | 24h |
| 100 | 1.6.1.5 | **Integration Testing** |  | 5d | 2005-09-29 | 2005-10-05 |  | 11d |  |  |  | 56h |
| 101 | 1.6.1.5.1 | QA Testing |  | 4d | 2005-09-29 | 2005-10-04 | 96 | 11d | 0d |  | Eric | 32h |
| 102 | 1.6.1.5.2 | Evaluate Results |  | 1d | 2005-10-05 | 2005-10-05 | 101 | 11d |  | start no earlier than 2004-11-16 | Eric; Vinay; Kunal | 24h |
| 103 | 1.6.1.6 | User Working Group Review (SAD, Design Models) |  | 1d | 2005-08-04 | 2005-08-04 |  | 55d |  | start no earlier than 2005-08-04 | Kalpesh | 8h |
| 104 | 1.6.1.7 | Iteration Complete | milestone | 0d | 2005-08-05 | 2005-08-05 |  | 55d |  | start no earlier than 2005-08-05 |  |  |

| ID | WBS | Task | Type | Duration | Start | Finish | Predecessors | Total slack | Constraint | Resources | Work |
| --- | --- | --- | --- | --- | --- | --- | --- | --- | --- | --- | --- |
| 105 | 1.6.2 | **Iteration - Auth Policy Caching** |  | 38d | 2005-08-29 | 2005-10-20 | 127 | 0d |  |  | 392h |
| 106 | 1.6.2.1 | Detailed Iteration Plan |  | 1d | 2005-08-30 | 2005-08-30 |  | 0d | start no earlier than 2005-06-22 | Vinay; Kunal | 16h |
| 107 | 1.6.2.2 | **Design** |  | 12d | 2005-08-31 | 2005-09-15 |  | 0d |  |  | 112h |
| 108 | 1.6.2.2.1 | Level 3 - 4 Use Cases |  | 6d | 2005-08-31 | 2005-09-07 | 106 | 0d | start no earlier than 2004-10-27 | Vinay | 48h |
| 109 | 1.6.2.2.2 | Use Case Model |  | 1d | 2005-09-08 | 2005-09-08 | 108 | 0d | start no earlier than 2004-10-27 | Vinay; XYZ | 16h |
| 110 | 1.6.2.2.3 | UML Class Diagram |  | 3d | 2005-09-09 | 2005-09-13 | 109 | 0d |  | Vinay | 24h |
| 111 | 1.6.2.2.4 | UML Sequence Diagram |  | 1d | 2005-09-14 | 2005-09-14 | 110 | 0d |  | Vinay | 8h |
| 112 | 1.6.2.2.5 | UML Activity Diagram |  | 1d | 2005-09-09 | 2005-09-09 | 109 | 29d | start no earlier than 2004-10-29 | Vinay | 8h |
| 113 | 1.6.2.2.6 | Design Review |  | 1d | 2005-09-15 | 2005-09-15 | 111 | 0d |  |  |  |
| 114 | 1.6.2.2.7 | Test Case Development |  | 1d | 2005-09-09 | 2005-09-09 | 109 | 29d |  | Eric | 8h |
| 115 | 1.6.2.3 | **Implementation** |  | 37d | 2005-08-30 | 2005-10-19 |  | 1d |  |  | 192h |
| 116 | 1.6.2.3.1 | Environment Setup |  | 2d | 2005-09-16 | 2005-09-19 | 113 | 0d | start no earlier than 2004-11-01 | XYZ | 16h |
| 117 | 1.6.2.3.2 | Code Development |  | 15d | 2005-09-20 | 2005-10-10 | 116 | 0d | start no earlier than 2004-11-08 | XYZ | 120h |
| 118 | 1.6.2.3.3 | Junit Test Development |  | 3d | 2005-08-30 | 2005-09-01 |  | 35d | start no earlier than 2005-07-15 | XYZ | 24h |
| 119 | 1.6.2.3.4 | Code Reviews |  | 4d | 2005-10-11 | 2005-10-14 | 117 | 0d | finish no earlier than 2004-11-15 | Charles | 32h |
| 120 | 1.6.2.3.5 | Bug Fixes |  | 3d | 2005-10-17 | 2005-10-19 | 119 | 1d | finish no earlier than 2005-07-18 |  |  |
| 121 | 1.6.2.4 | **Unit Testing** |  | 3d | 2005-08-30 | 2005-09-01 |  | 35d |  |  | 24h |
| 122 | 1.6.2.4.1 | Perform Testing |  | 3d | 2005-08-30 | 2005-09-01 |  | 35d | finish no earlier than 2005-07-12 | Vinay | 24h |
| 123 | 1.6.2.5 | **Integration Testing** |  | 4d | 2005-10-17 | 2005-10-20 |  | 0d |  |  | 48h |
| 124 | 1.6.2.5.1 | QA Testing |  | 3d | 2005-10-17 | 2005-10-19 | 119 | 0d |  | Eric | 24h |
| 125 | 1.6.2.5.2 | Evaluate Results |  | 1d | 2005-10-20 | 2005-10-20 | 124 | 0d | start no earlier than 2004-11-16 | Eric; Vinay; Kunal | 24h |
| 126 | 1.6.2.6 | Iteration Complete | milestone | 0d | 2005-08-29 | 2005-08-29 |  | 38d | start no earlier than 2005-07-20 |  |  |
| 127 | 1.6.3 | **Iteration - Authentication Web Service** |  | 26d | 2005-07-25 | 2005-08-29 |  | 0d |  |  | 296h |
| 128 | 1.6.3.1 | Detailed Iteration Plan |  | 2d | 2005-07-25 | 2005-07-26 |  | 0d | start no earlier than 2004-10-26 | Kunal | 16h |

| ID | WBS | Task | Type | Duration | Start | Finish | Predecessors | Total slack | Free slack | Constraint | Resources | Work |
| --- | --- | --- | --- | --- | --- | --- | --- | --- | --- | --- | --- | --- |
| 129 | 1.6.3.2 | **Design** |  | 7d | 2005-07-27 | 2005-08-04 |  | 0d |  |  |  | 80h |
| 130 | 1.6.3.2.1 | Level 3 - 4 Use Cases |  | 2d | 2005-07-27 | 2005-07-28 | 128 | 0d |  | start no earlier than 2004-10-27 | Kunal; Vinay | 32h |
| 131 | 1.6.3.2.2 | Use Case Model |  | 1d | 2005-07-29 | 2005-07-29 | 130 | 0d |  | start no earlier than 2004-10-27 | Kunal | 8h |
| 132 | 1.6.3.2.3 | UML Sequence Diagram |  | 1d | 2005-08-01 | 2005-08-01 | 131 | 0d |  |  | Kunal | 8h |
| 133 | 1.6.3.2.4 | UML Class Diagram |  | 2d | 2005-08-02 | 2005-08-03 | 132 | 0d |  |  | Kunal | 16h |
| 134 | 1.6.3.2.5 | UML Activity Diagram |  | 1d | 2005-08-01 | 2005-08-01 | 131 | 20d |  | start no earlier than 2004-10-29 | Kunal | 8h |
| 135 | 1.6.3.2.6 | Design Review |  | 1d | 2005-08-04 | 2005-08-04 | 133 | 0d |  |  |  |  |
| 136 | 1.6.3.2.7 | Test Case Development |  | 1d | 2005-08-01 | 2005-08-01 | 131 | 20d |  |  | Eric | 8h |
| 137 | 1.6.3.3 | **Implementation** |  | 15d | 2005-08-05 | 2005-08-25 |  | 0d |  |  |  | 136h |
| 138 | 1.6.3.3.1 | Environment Setup |  | 1d | 2005-08-05 | 2005-08-05 | 135 | 0d |  | start no earlier than 2004-11-01 | XYZ | 8h |
| 139 | 1.6.3.3.2 | Code Development |  | 10d | 2005-08-08 | 2005-08-19 | 138 | 0d |  | start no earlier than 2004-11-08 | XYZ | 80h |
| 140 | 1.6.3.3.3 | Junit Test Development |  | 2d | 2005-08-17 | 2005-08-18 |  | 7d |  | start no earlier than 2005-08-17 | XYZ | 16h |
| 141 | 1.6.3.3.4 | Code Reviews |  | 2d | 2005-08-22 | 2005-08-23 | 139 | 0d |  | finish no earlier than 2004-11-15 | Charles | 16h |
| 142 | 1.6.3.3.5 | Bug Fixes |  | 2d | 2005-08-24 | 2005-08-25 | 141 | 2d |  | finish no earlier than 2005-08-03 | XYZ | 16h |
| 143 | 1.6.3.4 | **Unit Testing** |  | 2d | 2005-08-18 | 2005-08-19 |  | 6d |  |  |  | 16h |
| 144 | 1.6.3.4.1 | Perform Testing |  | 2d | 2005-08-18 | 2005-08-19 |  | 6d |  | finish no earlier than 2005-08-19 | Kunal | 16h |
| 145 | 1.6.3.5 | **Integration Testing** |  | 4d | 2005-08-24 | 2005-08-29 |  | 0d |  |  |  | 48h |
| 146 | 1.6.3.5.1 | QA Testing |  | 3d | 2005-08-24 | 2005-08-26 | 141 | 0d |  | start no earlier than 2005-08-22 | Eric | 24h |
| 147 | 1.6.3.5.2 | Evaluate Results |  | 1d | 2005-08-29 | 2005-08-29 | 146 | 0d |  | start no earlier than 2004-11-16 | Eric; XYZ; Kunal | 24h |
| 148 | 1.6.3.6 | Iteration Complete | milestone | 0d | 2005-08-05 | 2005-08-05 |  | 17d |  | start no earlier than 2005-08-05 |  |  |
| 149 | 1.6.4 | **Iteration - Policy Adapters** |  | 33d | 2005-07-25 | 2005-09-07 |  | 31d |  |  |  | 408h |
| 150 | 1.6.4.1 | Detailed Iteration Plan |  | 1d | 2005-07-25 | 2005-07-25 |  | 31d | 0d | start no earlier than 2004-10-26 | Vinay; Kunal | 16h |
| 151 | 1.6.4.2 | **Design** |  | 8d | 2005-07-26 | 2005-08-04 |  | 31d |  |  |  | 120h |
| 152 | 1.6.4.2.1 | Level 3 - 4 Use Cases |  | 3d | 2005-07-26 | 2005-07-28 | 150 | 31d | 0d | start no earlier than 2004-10-27 | Kunal; Vinay | 48h |
| 153 | 1.6.4.2.2 | Use Case Model |  | 1d | 2005-07-29 | 2005-07-29 | 152 | 31d | 0d | start no earlier than 2004-10-27 | Vinay; Kunal | 16h |
| 154 | 1.6.4.2.3 | UML Sequence Diagram |  | 1d | 2005-08-01 | 2005-08-01 | 153 | 55d | 0d |  | Kunal | 8h |
| 155 | 1.6.4.2.4 | UML Class Diagram |  | 3d | 2005-08-02 | 2005-08-04 | 154 | 55d |  |  | Vinay | 24h |
| 156 | 1.6.4.2.5 | UML Activity Diagram |  | 1d | 2005-08-01 | 2005-08-01 | 153 | 31d | 0d | start no earlier than 2004-10-29 | Vinay | 8h |
| 157 | 1.6.4.2.6 | Design Review |  | 1d | 2005-08-02 | 2005-08-02 | 156 | 57d |  |  |  |  |
| 158 | 1.6.4.2.7 | Test Case Development |  | 2d | 2005-08-01 | 2005-08-02 | 153 | 57d |  |  | Eric | 16h |

| ID | WBS | Task | Type | Duration | Start | Finish | Predecessors | Total slack | Free slack | Constraint | Resources | Work |
| --- | --- | --- | --- | --- | --- | --- | --- | --- | --- | --- | --- | --- |
| 159 | 1.6.4.3 | **Implementation** |  | 26d | 2005-08-01 | 2005-09-05 |  | 32d |  |  |  | 192h |
| 160 | 1.6.4.3.1 | Environment Setup |  | 1d | 2005-08-02 | 2005-08-02 | 156 | 31d | 0d | start no earlier than 2004-11-01 | Vinay; Kunal | 16h |
| 161 | 1.6.4.3.2 | Code Development |  | 20d | 2005-08-03 | 2005-08-30 | 160 | 31d | 0d | start no earlier than 2004-11-08 | Vinay | 160h |
| 162 | 1.6.4.3.3 | Junit Test Development |  | 4d | 2005-08-01 | 2005-08-04 |  | 55d |  | start no earlier than 2005-08-01 |  |  |
| 163 | 1.6.4.3.4 | Code Reviews |  | 1d | 2005-08-31 | 2005-08-31 | 161 | 31d | 0d | finish no earlier than 2004-11-15 | Kalpesh; Charles | 16h |
| 164 | 1.6.4.3.5 | Bug Fixes |  | 3d | 2005-09-01 | 2005-09-05 | 163 | 33d |  | finish no earlier than 2005-08-03 |  |  |
| 165 | 1.6.4.4 | **Unit Testing** |  | 3d | 2005-08-08 | 2005-08-10 |  | 51d |  |  |  | 24h |
| 166 | 1.6.4.4.1 | Perform Testing |  | 3d | 2005-08-08 | 2005-08-10 |  | 51d |  | finish no earlier than 2005-08-10 | Kunal | 24h |
| 167 | 1.6.4.5 | **Integration Testing** |  | 5d | 2005-09-01 | 2005-09-07 |  | 31d |  |  |  | 56h |
| 168 | 1.6.4.5.1 | QA Testing |  | 4d | 2005-09-01 | 2005-09-06 | 163 | 31d | 0d |  | Eric | 32h |
| 169 | 1.6.4.5.2 | Evaluate Results |  | 1d | 2005-09-07 | 2005-09-07 | 168 | 31d | 0d | start no earlier than 2004-11-16 | Eric; Vinay; Kunal | 24h |
| 170 | 1.6.4.6 | Iteration Complete | milestone | 0d | 2005-09-07 | 2005-09-07 | 169 | 31d |  | start no earlier than 2005-08-18 |  |  |
| 171 | 1.6.5 | **Iteration - UPT Enhancements** |  | 54d | 2005-07-25 | 2005-10-07 |  | 10d |  |  |  | 544h |
| 172 | 1.6.5.1 | Detailed Iteration Plan |  | 1d | 2005-07-25 | 2005-07-25 |  | 15d | 0d | start no earlier than 2004-10-26 | Vinay; Kunal | 16h |
| 173 | 1.6.5.2 | **Design** |  | 8d | 2005-07-26 | 2005-08-04 |  | 15d |  |  |  | 136h |
| 174 | 1.6.5.2.1 | Level 3 - 4 Use Cases |  | 3d | 2005-07-26 | 2005-07-28 | 172 | 46d | 0d | start no earlier than 2004-10-27 | Kunal; Vinay | 48h |
| 175 | 1.6.5.2.2 | Use Case Model |  | 1d | 2005-07-29 | 2005-07-29 | 174 | 46d | 0d | start no earlier than 2004-10-27 | Vinay; Kunal | 16h |
| 176 | 1.6.5.2.3 | UML Sequence Diagram |  | 1d | 2005-08-01 | 2005-08-01 | 175 | 87d | 0d |  | Kunal | 8h |
| 177 | 1.6.5.2.4 | UML Class Diagram |  | 2d | 2005-08-02 | 2005-08-03 | 176 | 87d |  |  | Vinay | 16h |
| 178 | 1.6.5.2.5 | UML Activity Diagram |  | 3d | 2005-08-01 | 2005-08-03 | 175 | 46d | 0d | start no earlier than 2004-10-29 | Vinay | 24h |
| 179 | 1.6.5.2.6 | Design Review |  | 1d | 2005-08-04 | 2005-08-04 | 178 | 86d |  |  |  |  |
| 180 | 1.6.5.2.7 | Test Case Development |  | 3d | 2005-08-01 | 2005-08-03 | 175 | 87d |  |  | Eric | 24h |
| 181 | 1.6.5.3 | **Implementation** |  | 46d | 2005-08-04 | 2005-10-06 |  | 10d |  |  |  | 288h |
| 182 | 1.6.5.3.1 | Environment Setup |  | 1d | 2005-08-04 | 2005-08-04 | 178 | 46d | 0d | start no earlier than 2004-11-01 | Vinay; Kunal | 16h |
| 183 | 1.6.5.3.2 | Code Development |  | 30d | 2005-08-05 | 2005-09-15 | 182 | 46d | 0d | start no earlier than 2004-11-08 | Vinay | 240h |
| 184 | 1.6.5.3.3 | Junit Test Development |  | 3d | 2005-09-26 | 2005-09-28 |  | 47d |  | finish no earlier than 2005-09-28 |  |  |
| 185 | 1.6.5.3.4 | Code Reviews |  | 2d | 2005-09-16 | 2005-09-19 | 183 | 46d | 0d | finish no earlier than 2004-11-15 | Kalpesh; Charles | 32h |
| 186 | 1.6.5.3.5 | Bug Fixes |  | 4d | 2005-10-03 | 2005-10-06 | 185 | 41d |  | start no earlier than 2005-10-03 |  |  |

| ID | WBS | Task | Type | Duration | Start | Finish | Predecessors | Total slack | Free slack | Constraint | Resources | Work |
| --- | --- | --- | --- | --- | --- | --- | --- | --- | --- | --- | --- | --- |
| 187 | 1.6.5.4 | **Unit Testing** |  | 3d | 2005-07-25 | 2005-07-27 |  | 61d |  |  |  | 24h |
| 188 | 1.6.5.4.1 | Perform Testing |  | 3d | 2005-07-25 | 2005-07-27 |  | 92d |  | finish no earlier than 2005-07-26 | Kunal | 24h |
| 189 | 1.6.5.5 | **Integration Testing** |  | 8d | 2005-09-20 | 2005-09-29 |  | 15d |  |  |  | 80h |
| 190 | 1.6.5.5.1 | QA Testing |  | 7d | 2005-09-20 | 2005-09-28 | 185 | 46d | 0d |  | Eric | 56h |
| 191 | 1.6.5.5.2 | Evaluate Results |  | 1d | 2005-09-29 | 2005-09-29 | 190 | 46d | 5d | start no earlier than 2004-11-16 | Eric; Vinay; Kunal | 24h |
| 192 | 1.6.5.6 | Iteration Complete | milestone | 0d | 2005-10-07 | 2005-10-07 | 191 | 10d |  | start no earlier than 2005-10-07 |  |  |
| 193 | 1.6.6 | **Iteration - AOP Integration** |  | 51d | 2005-08-08 | 2005-10-17 | 84 | 3d |  |  |  | 560h |
| 194 | 1.6.6.1 | Detailed Iteration Plan |  | 1d | 2005-08-08 | 2005-08-08 |  | 3d | 0d | start no earlier than 2004-10-26 | Vinay; Kunal | 16h |
| 195 | 1.6.6.2 | **Design** |  | 10d | 2005-08-09 | 2005-08-22 |  | 3d |  |  |  | 136h |
| 196 | 1.6.6.2.1 | Level 3 - 4 Use Cases |  | 3d | 2005-08-09 | 2005-08-11 | 194 | 3d | 0d | start no earlier than 2004-10-27 | Kunal; Vinay | 48h |
| 197 | 1.6.6.2.2 | Use Case Model |  | 1d | 2005-08-12 | 2005-08-12 | 196 | 3d | 0d | start no earlier than 2004-10-27 | Vinay; Kunal | 16h |
| 198 | 1.6.6.2.3 | UML Sequence Diagram |  | 1d | 2005-08-15 | 2005-08-15 | 197 | 3d | 0d |  | Kunal | 8h |
| 199 | 1.6.6.2.4 | UML Class Diagram |  | 4d | 2005-08-16 | 2005-08-19 | 198 | 3d | 0d |  | Vinay | 32h |
| 200 | 1.6.6.2.5 | UML Activity Diagram |  | 1d | 2005-08-15 | 2005-08-15 | 197 | 48d |  | start no earlier than 2004-10-29 | Vinay | 8h |
| 201 | 1.6.6.2.6 | Design Review |  | 1d | 2005-08-22 | 2005-08-22 | 199 | 3d | 0d |  |  |  |
| 202 | 1.6.6.2.7 | Test Case Development |  | 3d | 2005-08-15 | 2005-08-17 | 197 | 46d |  |  | Eric | 24h |
| 203 | 1.6.6.3 | **Implementation** |  | 48d | 2005-08-08 | 2005-10-12 |  | 6d |  |  |  | 304h |
| 204 | 1.6.6.3.1 | Environment Setup |  | 2d | 2005-08-22 | 2005-08-23 | 199 | 3d | 0d | start no earlier than 2004-11-01 | XYZ; Kunal | 32h |
| 205 | 1.6.6.3.2 | Code Development |  | 30d | 2005-08-24 | 2005-10-04 | 204 | 3d | 0d | start no earlier than 2004-11-08 | Vinay | 240h |
| 206 | 1.6.6.3.3 | Junit Test Development |  | 4d | 2005-08-08 | 2005-08-11 |  | 50d |  | start no earlier than 2005-07-15 |  |  |
| 207 | 1.6.6.3.4 | Code Reviews |  | 2d | 2005-10-05 | 2005-10-06 | 205 | 3d | 0d | finish no earlier than 2004-11-15 | Kalpesh; Charles | 32h |
| 208 | 1.6.6.3.5 | Bug Fixes |  | 4d | 2005-10-07 | 2005-10-12 | 207 | 6d |  | finish no earlier than 2005-08-03 |  |  |
| 209 | 1.6.6.4 | **Unit Testing** |  | 3d | 2005-08-08 | 2005-08-10 |  | 51d |  |  |  | 24h |
| 210 | 1.6.6.4.1 | Perform Testing |  | 3d | 2005-08-08 | 2005-08-10 |  | 50d |  | finish no earlier than 2005-07-26 | Kunal | 24h |

| ID | WBS | Task | Type | Duration | Start | Finish | Predecessors | Total slack | Free slack | Constraint | Resources | Work |
| --- | --- | --- | --- | --- | --- | --- | --- | --- | --- | --- | --- | --- |
| 211 | 1.6.6.5 | **Integration Testing** |  | 7d | 2005-10-07 | 2005-10-17 |  | 3d |  |  |  | 72h |
| 212 | 1.6.6.5.1 | QA Testing |  | 6d | 2005-10-07 | 2005-10-14 | 207 | 2d | 0d |  | Eric | 48h |
| 213 | 1.6.6.5.2 | Evaluate Results |  | 1d | 2005-10-17 | 2005-10-17 | 212 | 2d | 0d | start no earlier than 2004-11-16 | Eric; Vinay; Kunal | 24h |
| 214 | 1.6.6.6 | User Working Group Review (SAD, Design Models) |  | 1d | 2005-08-08 | 2005-08-08 |  | 53d |  | start no earlier than 2005-08-04 | Kalpesh | 8h |
| 215 | 1.6.6.7 | Iteration Complete | milestone | 0d | 2005-10-17 | 2005-10-17 | 213 | 3d |  | start no earlier than 2005-08-05 |  |  |
| 216 | 1.6.7 | **Iteration - Message Level Security** |  | 40d | 2005-08-23 | 2005-10-17 | 201 | 3d |  |  |  | 432h |
| 217 | 1.6.7.1 | Detailed Iteration Plan |  | 1d | 2005-08-23 | 2005-08-23 |  | 3d | 0d | start no earlier than 2005-06-22 | Vinay; Kunal | 16h |
| 218 | 1.6.7.2 | **Design** |  | 9d | 2005-08-24 | 2005-09-05 |  | 3d |  |  |  | 112h |
| 219 | 1.6.7.2.1 | Level 3 - 4 Use Cases |  | 3d | 2005-08-24 | 2005-08-26 | 217 | 3d | 0d | start no earlier than 2004-10-27 | Kunal; Vinay | 48h |
| 220 | 1.6.7.2.2 | Use Case Model |  | 1d | 2005-08-29 | 2005-08-29 | 219 | 3d | 0d | start no earlier than 2004-10-27 | Vinay; Kunal | 16h |
| 221 | 1.6.7.2.3 | UML Sequence Diagram |  | 1d | 2005-08-30 | 2005-08-30 | 220 | 3d | 0d |  | Kunal | 8h |
| 222 | 1.6.7.2.4 | UML Class Diagram |  | 3d | 2005-08-31 | 2005-09-02 | 221 | 3d | 0d |  | Vinay | 24h |
| 223 | 1.6.7.2.5 | UML Activity Diagram |  | 1d | 2005-08-30 | 2005-08-30 | 220 | 37d |  | start no earlier than 2004-10-29 | Vinay | 8h |
| 224 | 1.6.7.2.6 | Design Review |  | 1d | 2005-09-05 | 2005-09-05 | 222 | 3d | 0d |  |  |  |
| 225 | 1.6.7.2.7 | Test Case Development |  | 1d | 2005-08-30 | 2005-08-30 | 220 | 37d |  |  | Eric | 8h |
| 226 | 1.6.7.3 | **Implementation** |  | 29d | 2005-09-06 | 2005-10-14 |  | 3d |  |  |  | 232h |
| 227 | 1.6.7.3.1 | Environment Setup |  | 2d | 2005-09-06 | 2005-09-07 | 224 | 3d | 0d | start no earlier than 2004-11-01 | Vinay | 16h |
| 228 | 1.6.7.3.2 | Code Development |  | 20d | 2005-09-08 | 2005-10-05 | 227 | 3d | 0d | start no earlier than 2004-11-08 | Vinay | 160h |
| 229 | 1.6.7.3.3 | Junit Test Development |  | 3d | 2005-09-08 | 2005-09-12 | 227 | 28d |  | start no earlier than 2005-07-15 | Vinay | 24h |
| 230 | 1.6.7.3.4 | Code Reviews |  | 4d | 2005-10-06 | 2005-10-11 | 228 | 3d | 0d | finish no earlier than 2004-11-15 | Charles | 32h |
| 231 | 1.6.7.3.5 | Bug Fixes |  | 3d | 2005-10-12 | 2005-10-14 | 230 | 4d |  | finish no earlier than 2005-07-18 |  |  |
| 232 | 1.6.7.4 | **Unit Testing** |  | 3d | 2005-09-08 | 2005-09-12 |  | 28d |  |  |  | 24h |
| 233 | 1.6.7.4.1 | Perform Testing |  | 3d | 2005-09-08 | 2005-09-12 | 227 | 28d |  | finish no earlier than 2005-07-12 | Vinay | 24h |
| 234 | 1.6.7.5 | **Integration Testing** |  | 4d | 2005-10-12 | 2005-10-17 |  | 3d |  |  |  | 48h |
| 235 | 1.6.7.5.1 | QA Testing |  | 3d | 2005-10-12 | 2005-10-14 | 230 | 3d | 0d |  | Eric | 24h |
| 236 | 1.6.7.5.2 | Evaluate Results |  | 1d | 2005-10-17 | 2005-10-17 | 235 | 3d | 0d | start no earlier than 2004-11-16 | Eric; Vinay; Kunal | 24h |
| 237 | 1.6.7.6 | Iteration Complete | milestone | 0d | 2005-10-17 | 2005-10-17 | 236 | 3d |  | start no earlier than 2005-09-15 |  |  |

| ID | WBS | Task | Type | Duration | Start | Finish | Predecessors | Total slack | Free slack | Constraint | Resources | Work |
| --- | --- | --- | --- | --- | --- | --- | --- | --- | --- | --- | --- | --- |
| 238 | 1.7 | **Transition** |  | 23d | 2005-10-20 | 2005-11-22 | 81 | 0d |  |  |  | 657.6h |
| 239 | 1.7.1 | **Iteration I** |  | 18d | 2005-10-20 | 2005-11-15 |  | 0d |  |  |  | 617.6h |
| 240 | 1.7.1.1 | **QA Testing** |  | 18d | 2005-10-21 | 2005-11-15 |  | 0d |  |  |  | 112h |
| 241 | 1.7.1.1.1 | Setup of Environment |  | 2d | 2005-10-21 | 2005-10-24 |  | 6d | 0d |  | Kunal; Vinay | 32h |
| 242 | 1.7.1.1.2 | Regression Testing |  | 10d | 2005-10-25 | 2005-11-07 | 241 | 6d |  |  | Eric | 80h |
| 243 | 1.7.1.1.3 | Bug Fixes |  | 3d | 2005-11-11 | 2005-11-15 |  | 0d |  | finish no earlier than 2005-11-15 |  |  |
| 244 | 1.7.1.2 | **Documentation** |  | 18d | 2005-10-21 | 2005-11-15 |  | 0d |  |  |  | 505.6h |
| 245 | 1.7.1.2.1 | Application Developers Guide Document |  | 15d | 2005-10-21 | 2005-11-10 |  | 0d |  | finish no earlier than 2005-02-04 | Kunal; Eric; Vinay | 360h |
| 246 | 1.7.1.2.2 | Java Docs |  | 4d | 2005-10-21 | 2005-10-26 | 81 | 14d |  | start no earlier than 2005-01-24 | Kunal; Vinay | 41.6h |
| 247 | 1.7.1.2.3 | UPT User Guide Updation |  | 10d | 2005-10-21 | 2005-11-03 | 81 | 8d |  | start no earlier than 2005-02-07 | Eric | 80h |
| 248 | 1.7.1.2.4 | caCore Technical Guide Modifications |  | 2d | 2005-11-11 | 2005-11-14 | 245 | 0d |  | finish no earlier than 2005-02-14 | Eric | 16h |
| 249 | 1.7.1.2.5 | Release Notes |  | 1d | 2005-11-15 | 2005-11-15 | 248 | 0d |  |  | Eric | 8h |
| 250 | 1.7.1.3 | Iteration I Complete | milestone | 0d | 2005-10-20 | 2005-10-20 |  | 0d |  | start no earlier than 2005-02-15 |  |  |
| 251 | 1.7.2 | **Iteration II** |  | 4d | 2005-11-15 | 2005-11-21 | 239 | 0d |  |  |  | 40h |
| 252 | 1.7.2.1 | **Staging Environment Testing** |  | 4d | 2005-11-16 | 2005-11-21 |  | 6d |  |  |  | 40h |
| 253 | 1.7.2.1.1 | Setup of Environment |  | 1d | 2005-11-16 | 2005-11-16 |  | 6d | 0d |  | Kunal; Vinay | 16h |
| 254 | 1.7.2.1.2 | Regression Testing |  | 3d | 2005-11-17 | 2005-11-21 | 253 | 6d |  |  | Eric | 24h |
| 255 | 1.7.2.1.3 | Bug Fixes |  | 1d | 2005-11-16 | 2005-11-16 |  | 9d |  | finish no earlier than 2005-11-15 |  |  |
| 256 | 1.7.2.2 | Iteration II Complete | milestone | 0d | 2005-11-15 | 2005-11-15 |  | 0d |  | start no earlier than 2005-02-28 |  |  |
| 257 | 1.7.3 | **Release** |  | 1d | 2005-11-22 | 2005-11-22 | 251 | 6d |  |  |  |  |
| 258 | 1.7.3.1 | Tag into the CVS & Release |  | 1d | 2005-11-22 | 2005-11-22 |  | 6d |  | start no earlier than 2005-03-07 |  |  |
